# 3.1一研为定WBS

Schedule from MS Project, 2020-03-19 to 2020-04-28, status date 2020-04-30, costs in ¥, A marks actual dates.

## Calendars

- 标准: Mon-Fri 08:00-12:00, 13:00-17:00; Sat-Sun off.

## Resources

| Resource |
| --- |
| 产品经理 |
| 项目经理 |
| UI专家 |
| 需求专家 |
| 设计专家 |
| 质量专家 |
| 测试员1 |
| 测试员2 |
| 程序员1 |
| 程序员2 |
| 程序员3 |
| 程序员4 |
| 程序员5 |

## Schedule

| ID | WBS | Task | Type | Duration | Start | Finish | Predecessors | Complete | Actual finish | Constraint | Resources | Work | Actual work | Cost | Actual cost |
| --- | --- | --- | --- | --- | --- | --- | --- | --- | --- | --- | --- | --- | --- | --- | --- |
| 1 | 1 | **启动** |  | 6d | 2020-03-19 A | 2020-03-26 |  | 100% | 2020-03-23 |  |  | 184h | 184h | 9,320 | 9,320 |
| 2 | 1.1 | 任命项目经理 | manual | 1d | 2020-03-19 A | 2020-03-19 A |  | 100% |  | as late as possible | 产品经理 | 8h | 8h | 800 | 800 |
| 3 | 1.2 | 组建核心团队 | manual | 1d | 2020-03-19 A | 2020-03-19 A |  | 100% |  | as late as possible | UI专家; 测试员1; 测试员2; 产品经理; 程序员1; 程序员2; 程序员3; 程序员4; 程序员5; 设计专家; 项目经理; 需求专家; 质量专家 | 104h | 104h | 3,800 | 3,800 |
| 4 | 1.3 | 制定里程碑计划 | manual | 1d | 2020-03-19 A | 2020-03-19 A |  | 100% |  | as late as possible | 产品经理; 项目经理 | 16h | 16h | 1,120 | 1,120 |
| 5 | 1.4 | 分析干系人 | manual | 1d | 2020-03-19 A | 2020-03-19 A |  | 100% |  | as late as possible | 产品经理; 项目经理 | 16h | 16h | 1,120 | 1,120 |
| 6 | 1.5 | 制定项目章程 | manual | 1d | 2020-03-20 A | 2020-03-20 A | 2, 3, 4, 5 | 100% |  | as late as possible | 产品经理; 项目经理 | 16h | 16h | 1,120 | 1,120 |
| 7 | 1.6 | 项目启动大会 | manual | 1d | 2020-03-23 A | 2020-03-23 A | 6 | 100% |  | as late as possible | 产品经理; 项目经理; 需求专家 | 24h | 24h | 1,360 | 1,360 |
| 8 | 2 | **规划** |  | 15d | 2020-03-24 A | 2020-04-13 A |  | 100% |  |  |  | 184h | 184h | 6,880 | 6,880 |
| 9 | 2.1 | **规划范围** |  | 4d | 2020-03-24 A | 2020-03-27 A |  | 100% |  |  |  | 56h | 56h | 1,920 | 1,920 |
| 10 | 2.1.1 | 制定需求说明书 | manual | 1d | 2020-03-24 A | 2020-03-24 A | 7 | 100% |  | as late as possible | 需求专家 | 8h | 8h | 240 | 240 |
| 11 | 2.1.2 | 界面设计 | manual | 1d | 2020-03-25 A | 2020-03-25 A | 10 | 100% |  | as late as possible | UI专家; 设计专家 | 16h | 16h | 480 | 480 |
| 12 | 2.1.3 | 详细设计说明书 | manual | 1d | 2020-03-25 A | 2020-03-25 A | 10 | 100% |  | as late as possible | 设计专家 | 8h | 8h | 240 | 240 |
| 13 | 2.1.4 | 范围说明书 | manual | 1d | 2020-03-25 A | 2020-03-25 A | 10 | 100% |  | as late as possible | 项目经理 | 8h | 8h | 320 | 320 |
| 14 | 2.1.5 | 创建WBS | manual | 1d | 2020-03-26 A | 2020-03-26 A | 11, 12, 13 | 100% |  | as late as possible | 项目经理 | 8h | 8h | 320 | 320 |
| 15 | 2.1.6 | 形成范围基准 | manual | 1d | 2020-03-27 A | 2020-03-27 A | 14 | 100% |  | as late as possible | 项目经理 | 8h | 8h | 320 | 320 |
| 16 | 2.2 | **规划时间** |  | 5d | 2020-03-28 A | 2020-04-02 A |  | 100% |  |  |  | 40h | 40h | 1,600 | 1,600 |
| 17 | 2.2.1 | 排列工作包顺序 | manual | 1d | 2020-03-28 A | 2020-03-28 A | 15 | 100% |  | as late as possible | 项目经理 | 8h | 8h | 320 | 320 |
| 18 | 2.2.2 | 估算资源 | manual | 1d | 2020-03-30 A | 2020-03-30 A | 17 | 100% |  | as late as possible | 项目经理 | 8h | 8h | 320 | 320 |
| 19 | 2.2.3 | 估算持续时间 | manual | 1d | 2020-03-31 A | 2020-03-31 A | 18 | 100% |  | as late as possible | 项目经理 | 8h | 8h | 320 | 320 |
| 20 | 2.2.4 | 制定进度计划 | manual | 1d | 2020-04-01 A | 2020-04-01 A | 19 | 100% |  | as late as possible | 项目经理 | 8h | 8h | 320 | 320 |
| 21 | 2.2.5 | 形成进度基准 | manual | 1d | 2020-04-02 A | 2020-04-02 A | 20 | 100% |  |  | 项目经理 | 8h | 8h | 320 | 320 |
| 22 | 2.3 | **规划成本** |  | 3d | 2020-04-03 A | 2020-04-07 A |  | 100% |  |  |  | 16h | 16h | 640 | 640 |
| 23 | 2.3.1 | 项目成本估算 | milestone, manual | 0d | 2020-04-03 A | 2020-04-03 A | 21 | 100% |  | as late as possible | 项目经理 |  |  |  |  |
| 24 | 2.3.2 | 项目预算 | manual | 1d | 2020-04-06 A | 2020-04-06 A | 23 | 100% |  | as late as possible | 项目经理 | 8h | 8h | 320 | 320 |
| 25 | 2.3.3 | 形成范围基准 | manual | 1d | 2020-04-07 A | 2020-04-07 A | 24 | 100% |  |  | 项目经理 | 8h | 8h | 320 | 320 |

| ID | WBS | Task | Type | Duration | Start | Finish | Predecessors | Complete | Actual finish | Constraint | Resources | Work | Actual work | Cost | Actual cost |
| --- | --- | --- | --- | --- | --- | --- | --- | --- | --- | --- | --- | --- | --- | --- | --- |
| 26 | 2.4 | **规划质量** |  | 2d | 2020-03-30 A | 2020-03-31 A |  | 100% |  |  |  | 16h | 16h | 480 | 480 |
| 27 | 2.4.1 | 制定测试计划 | manual | 1d | 2020-03-30 A | 2020-03-30 A | 15 | 100% |  | as late as possible | 质量专家 | 8h | 8h | 240 | 240 |
| 28 | 2.4.2 | 制定测试用例 | manual | 1d | 2020-03-31 A | 2020-03-31 A | 27 | 100% |  | as late as possible | 质量专家 | 8h | 8h | 240 | 240 |
| 29 | 2.5 | **规划人力资源** |  | 2d | 2020-03-31 A | 2020-04-01 A |  | 100% |  |  |  | 16h | 16h | 640 | 640 |
| 30 | 2.5.1 | 制定人力资源计划 | manual | 1d | 2020-03-31 A | 2020-03-31 A | 18 | 100% |  | as late as possible | 项目经理 | 8h | 8h | 320 | 320 |
| 31 | 2.5.2 | 制定人员配备管理计划 | manual | 1d | 2020-04-01 A | 2020-04-01 A | 30 | 100% |  | as late as possible | 项目经理 | 8h | 8h | 320 | 320 |
| 32 | 2.6 | **规划沟通** |  | 1d | 2020-04-02 A | 2020-04-02 A |  | 100% |  |  |  | 8h | 8h | 320 | 320 |
| 33 | 2.6.1 | 制定沟通管理计划 | manual | 1d | 2020-04-02 A | 2020-04-02 A | 31 | 100% |  | as late as possible | 项目经理 | 8h | 8h | 320 | 320 |
| 34 | 2.7 | **规划风险** |  | 4d | 2020-04-08 A | 2020-04-13 |  | 100% | 2020-04-10 |  |  | 24h | 24h | 960 | 960 |
| 35 | 2.7.1 | 识别风险 | manual | 1d | 2020-04-08 A | 2020-04-08 A | 16, 22, 26, 29 | 100% |  | as late as possible | 项目经理 | 8h | 8h | 320 | 320 |
| 36 | 2.7.2 | 风险分析 | manual | 1d | 2020-04-09 A | 2020-04-09 A | 35 | 100% |  | as late as possible | 项目经理 | 8h | 8h | 320 | 320 |
| 37 | 2.7.3 | 制定风险登记册 | manual | 1d | 2020-04-10 A | 2020-04-10 A | 36 | 100% |  | as late as possible | 项目经理 | 8h | 8h | 320 | 320 |
| 38 | 2.8 | 规划整合 | manual | 1d | 2020-04-13 A | 2020-04-13 A | 37 | 100% |  | as late as possible | 项目经理 | 8h | 8h | 320 | 320 |
| 39 | 3 | **执行与监控** |  | 1d | 2020-04-14 A | 2020-04-14 |  | 100% | 2020-04-27 |  |  | 752h | 752h | 27,520 | 27,520 |
| 40 | 3.1 | 组建项目团队 | manual | 1d | 2020-04-14 A | 2020-04-14 A | 8 | 100% |  | as late as possible | UI专家; 测试员1; 测试员2; 产品经理; 程序员1; 程序员2; 程序员3; 程序员4; 程序员5; 设计专家; 项目经理; 需求专家; 质量专家 | 104h | 104h | 3,800 | 3,800 |
| 41 | 3.2 | **项目执行** |  | 6d | 2020-04-15 A | 2020-04-22 A |  | 100% |  |  |  | 128h | 128h | 4,480 | 4,480 |
| 42 | 3.2.1 | **用户模块** |  | 6d | 2020-04-15 A | 2020-04-22 A |  | 100% |  |  |  | 96h | 96h | 3,360 | 3,360 |
| 43 | 3.2.1.1 | 注册登录 | manual | 1d | 2020-04-15 A | 2020-04-15 A | 40 | 100% |  | as late as possible | 程序员1 | 8h | 8h | 280 | 280 |
| 44 | 3.2.1.2 | 浏览院校专业 | manual | 1d | 2020-04-16 A | 2020-04-16 A | 43 | 100% |  | as late as possible | 程序员2 | 8h | 8h | 280 | 280 |
| 45 | 3.2.1.3 | 查询院校专业 | manual | 1d | 2020-04-16 A | 2020-04-16 A | 43 | 100% |  | as late as possible | 程序员2 | 8h | 8h | 280 | 280 |
| 46 | 3.2.1.4 | 发表文章 | manual | 1d | 2020-04-17 A | 2020-04-17 A | 45 | 100% |  | as late as possible | 程序员3 | 8h | 8h | 280 | 280 |
| 47 | 3.2.1.5 | 回复文章 | manual | 1d | 2020-04-17 A | 2020-04-17 A | 45 | 100% |  | as late as possible | 程序员3 | 8h | 8h | 280 | 280 |
| 48 | 3.2.1.6 | 每日打卡 | manual | 1d | 2020-04-20 A | 2020-04-20 A | 47 | 100% |  | as late as possible | 程序员4 | 8h | 8h | 280 | 280 |
| 49 | 3.2.1.7 | 添加学习任务 | manual | 1d | 2020-04-20 A | 2020-04-20 A | 47 | 100% |  | as late as possible | 程序员4 | 8h | 8h | 280 | 280 |
| 50 | 3.2.1.8 | 考研自习室 | manual | 1d | 2020-04-21 A | 2020-04-21 A | 49 | 100% |  | as late as possible | 程序员5 | 8h | 8h | 280 | 280 |
| 51 | 3.2.1.9 | 考研真题资料 | manual | 1d | 2020-04-21 A | 2020-04-21 A | 49 | 100% |  | as late as possible | 程序员5 | 8h | 8h | 280 | 280 |
| 52 | 3.2.1.10 | 考研网课 | manual | 1d | 2020-04-21 A | 2020-04-21 A | 49 | 100% |  |  | 程序员5 | 8h | 8h | 280 | 280 |
| 53 | 3.2.1.11 | 考研答疑 | manual | 1d | 2020-04-21 A | 2020-04-21 A | 49 | 100% |  | as late as possible | 程序员5 | 8h | 8h | 280 | 280 |
| 54 | 3.2.1.12 | 个人中心 | manual | 1d | 2020-04-22 A | 2020-04-22 A | 53 | 100% |  | as late as possible | 程序员1 | 8h | 8h | 280 | 280 |

| ID | WBS | Task | Type | Duration | Start | Finish | Predecessors | Complete | Actual finish | Constraint | Resources | Work | Actual work | Cost | Actual cost |
| --- | --- | --- | --- | --- | --- | --- | --- | --- | --- | --- | --- | --- | --- | --- | --- |
| 55 | 3.2.2 | **管理员模块** |  | 2d | 2020-04-15 A | 2020-04-16 A |  | 100% |  |  |  | 32h | 32h | 1,120 | 1,120 |
| 56 | 3.2.2.1 | 数据分析 | manual | 2d | 2020-04-15 A | 2020-04-16 A | 40 | 100% |  | as late as possible | 程序员1 | 16h | 16h | 560 | 560 |
| 57 | 3.2.2.2 | 信息资料收集 | manual | 2d | 2020-04-15 A | 2020-04-16 A | 40 | 100% |  | as late as possible | 程序员1 | 16h | 16h | 560 | 560 |
| 58 | 3.3 | **项目监控** |  | 3d | 2020-04-15 A | 2020-04-17 A |  | 100% |  |  |  | 160h | 160h | 6,200 | 6,200 |
| 59 | 3.3.1 | 各项指标监控 | manual | 1d | 2020-04-15 A | 2020-04-15 A | 40 | 100% |  | as late as possible | 测试员1; 产品经理; 项目经理 | 24h | 24h | 1,280 | 1,280 |
| 60 | 3.3.2 | 监控评审 | manual | 1d | 2020-04-16 A | 2020-04-16 A | 59 | 100% |  | as late as possible | 设计专家; 项目经理 | 16h | 16h | 560 | 560 |
| 61 | 3.3.3 | 变更评审 | manual | 1d | 2020-04-17 A | 2020-04-17 A | 60 | 100% |  | as late as possible | 设计专家; 项目经理 | 16h | 16h | 560 | 560 |
| 62 | 3.3.4 | 例会 | manual | 1d | 2020-04-15 A | 2020-04-15 A | 40 | 100% |  | as late as possible | UI专家; 测试员1; 测试员2; 产品经理; 程序员1; 程序员2; 程序员3; 程序员4; 程序员5; 设计专家; 项目经理; 需求专家; 质量专家 | 104h | 104h | 3,800 | 3,800 |
| 63 | 3.4 | **管理干系人** |  | 1d | 2020-04-15 A | 2020-04-15 A |  | 100% |  |  |  | 24h | 24h | 960 | 960 |
| 64 | 3.4.1 | 发布项目信息 | manual | 1d | 2020-04-15 A | 2020-04-15 A | 40 | 100% |  | as late as possible | 项目经理 | 8h | 8h | 320 | 320 |
| 65 | 3.4.2 | 报告监控指标 | manual | 1d | 2020-04-15 A | 2020-04-15 A | 40 | 100% |  | as late as possible | 项目经理 | 8h | 8h | 320 | 320 |
| 66 | 3.4.3 | 干系人沟通 | manual | 1d | 2020-04-15 A | 2020-04-15 A | 40 | 100% |  | as late as possible | 项目经理 | 8h | 8h | 320 | 320 |
| 67 | 3.5 | **团队建设** |  | 2d | 2020-04-15 A | 2020-04-16 |  | 100% | 2020-04-15 |  |  | 288h | 288h | 10,000 | 10,000 |
| 68 | 3.5.1 | 培训 | manual | 1d | 2020-04-15 A | 2020-04-15 A | 40 | 100% |  | as late as possible | UI专家; 测试员1; 测试员2; 程序员1; 程序员2; 程序员3; 程序员4; 程序员5; 设计专家; 需求专家; 质量专家 | 88h | 88h | 2,680 | 2,680 |
| 69 | 3.5.2 | 娱乐活动 | manual | 1d | 2020-04-15 A | 2020-04-15 A | 40 | 100% |  | as late as possible | UI专家; 测试员1; 测试员2; 产品经理; 程序员1; 程序员2; 程序员3; 程序员5; 设计专家; 项目经理; 需求专家; 质量专家 | 96h | 96h | 3,520 | 3,520 |
| 70 | 3.5.3 | 沟通 | manual | 1d | 2020-04-15 A | 2020-04-15 A | 40 | 100% |  | as late as possible | UI专家; 测试员1; 测试员2; 产品经理; 程序员1; 程序员2; 程序员3; 程序员4; 程序员5; 设计专家; 项目经理; 需求专家; 质量专家 | 104h | 104h | 3,800 | 3,800 |
| 71 | 3.6 | 项目验收 | manual | 1d | 2020-04-27 A | 2020-04-27 A | 41 | 100% |  | as late as possible | UI专家; 产品经理; 设计专家; 项目经理; 需求专家; 质量专家 | 48h | 48h | 2,080 | 2,080 |
| 72 | 4 | **收尾** |  | 1d | 2020-04-28 A | 2020-04-28 A |  | 100% |  |  |  | 104h | 104h | 4,320 | 4,320 |
| 73 | 4.1 | 项目终检 | manual | 1d | 2020-04-28 A | 2020-04-28 A | 71 | 100% |  | as late as possible | UI专家; 产品经理; 设计专家; 项目经理; 需求专家; 质量专家 | 48h | 48h | 2,080 | 2,080 |
| 74 | 4.2 | 项目内部收尾 | manual | 1d | 2020-04-28 A | 2020-04-28 A | 71 | 100% |  | as late as possible | UI专家; 测试员1; 产品经理; 设计专家; 项目经理; 需求专家; 质量专家 | 56h | 56h | 2,240 | 2,240 |
